# Project Schedule

Schedule from MS Project, 2024-09-23 to 2025-01-31, status date 2024-10-02, A marks actual dates.

## Calendars

- Standard: Mon-Fri 08:00-12:00, 13:00-17:00; Sat-Sun off.

## Resources

| Resource |
| --- |
| Maxi |
| Daniel |
| Eren |

## Schedule

| ID | WBS | Task | Type | Duration | Start | Finish | Predecessors | Complete | Remaining | Total slack | Free slack | Constraint | Resources | Work | Actual work |
| --- | --- | --- | --- | --- | --- | --- | --- | --- | --- | --- | --- | --- | --- | --- | --- |
| 1 | 1 | **Project Management** |  | 95d | 2024-09-23 A | 2025-01-31 |  |  | 95d |  |  |  |  |  |  |
| 2 | 1.1 | Project kick-off | milestone, manual | 0d | 2024-09-23 A | 2024-09-23 A |  | 100% |  |  |  |  |  |  |  |
| 3 | 1.2 | Initial Project Plan | milestone, manual | 0d | 2024-09-27 A | 2024-09-27 A |  | 100% |  |  |  |  |  |  |  |
| 4 | 1.3 | Project Plan Review 1 | milestone, manual | 0d | 2024-10-25 | 2024-10-25 |  |  |  |  |  |  |  |  |  |
| 5 | 1.4 | Project Plan Review 2 | milestone, manual | 0d | 2024-11-29 | 2024-11-29 |  |  |  |  |  |  |  |  |  |
| 6 | 1.5 | Final Review | milestone, manual | 0d | 2025-01-24 | 2025-01-24 |  |  |  |  |  |  |  |  |  |
| 7 | 1.6 | Demo & Presentation | milestone, manual | 0d | 2025-01-31 | 2025-01-31 |  |  |  |  |  |  |  |  |  |
| 9 | 1.7 | Project Status | manual | 1d? | 2024-09-23 | 2024-09-23 |  |  |  |  |  |  |  |  |  |
| 10 | 2 | Collecting Requirement | manual | 4d | 2024-09-25 A | 2024-09-30 A |  | 100% |  |  |  |  | Daniel [20%]; Eren [20%]; Maxi [20%] | 19.2h | 19.2h |
| 11 | 3 | Generate Concept | manual | 4d | 2024-10-01 A | 2024-10-04 |  | 50% | 2d |  |  |  | Daniel [20%]; Eren [20%]; Maxi [20%] | 19.2h | 9.6h |
| 13 | 4 | **Mechanical Design** |  | 75d | 2024-10-07 | 2025-01-17 |  |  |  | 0d |  |  |  | 97.6h |  |
| 14 | 4.1 | **Gripper** |  | 40d | 2024-10-07 | 2024-11-29 |  |  |  | 0d |  |  |  | 56h |  |
| 15 | 4.1.1 | Design | manual | 10d | 2024-10-07 | 2024-10-18 |  |  |  |  |  |  | Maxi [20%] | 16h |  |
| 16 | 4.1.2 | Design v1 | manual | 5d | 2024-10-28 | 2024-11-01 |  |  |  |  |  |  | Maxi [20%] | 8h |  |
| 17 | 4.1.3 | Build | manual | 15d | 2024-11-04 | 2024-11-22 | 15 |  |  |  |  |  | Maxi [20%] | 24h |  |
| 18 | 4.1.4 | Function Test |  | 5d | 2024-11-25 | 2024-11-29 | 17 |  |  | 45d |  |  | Maxi [20%] | 8h |  |
| 19 | 4.2 | **Bolt Tray** |  | 26d | 2024-10-07 | 2024-11-11 |  |  |  | 0d |  |  |  | 41.6h |  |
| 20 | 4.2.1 | Design | manual | 10d | 2024-10-07 | 2024-10-18 |  |  |  |  |  |  | Eren [20%] | 16h |  |
| 21 | 4.2.2 | Design v1 |  | 10d | 2024-10-21 | 2024-11-01 | 20 |  |  | 59d | 0d | finish no earlier than 2024-11-01 | Eren [20%] | 16h |  |
| 22 | 4.2.3 | Build |  | 5d | 2024-11-04 | 2024-11-08 | 21 |  |  | 59d | 0d |  | Eren [20%] | 8h |  |
| 23 | 4.2.4 | Function Test |  | 1d | 2024-11-11 | 2024-11-11 | 22 |  |  | 59d |  |  | Eren [20%] | 1.6h |  |
| 24 | 4.3 | **Protection for harsh conditions** |  | 10d | 2025-01-06 | 2025-01-17 |  |  |  | 0d |  |  |  |  |  |
| 25 | 4.3.1 | Design | manual | 10d | 2025-01-06 | 2025-01-17 |  |  |  |  |  |  |  |  |  |
| 26 | 5 | **Electrical Design** |  | 15d | 2024-11-18 | 2024-12-06 |  |  |  | 0d |  |  |  | 24h |  |
| 27 | 5.1 | Design | manual | 10d | 2024-11-18 | 2024-11-29 | 32 |  |  |  |  |  | Eren [20%] | 16h |  |
| 28 | 5.2 | Wiring | manual | 4d | 2024-12-02 | 2024-12-05 | 27 |  |  |  |  |  | Eren [20%] | 6.4h |  |
| 29 | 5.3 | Test | manual | 1d | 2024-12-06 | 2024-12-06 | 28 |  |  |  |  |  | Eren [20%] | 1.6h |  |

| ID | WBS | Task | Type | Duration | Start | Finish | Predecessors | Total slack | Resources | Work |
| --- | --- | --- | --- | --- | --- | --- | --- | --- | --- | --- |
| 30 | 6 | **Software Design** |  | 40d | 2024-10-07 | 2024-11-29 |  | 0d |  | 56h |
| 31 | 6.1 | **Robot Manipulator** |  | 40d | 2024-10-07 | 2024-11-29 |  | 0d |  | 56h |
| 32 | 6.1.1 | Select Robot Arm | manual | 10d | 2024-10-07 | 2024-10-18 |  |  | Daniel [20%] | 16h |
| 33 | 6.1.2 | Code | manual | 20d | 2024-10-28 | 2024-11-22 | 32 |  | Daniel [20%] | 32h |
| 34 | 6.1.3 | Function Test |  | 5d | 2024-11-25 | 2024-11-29 | 33 | 45d | Daniel [20%] | 8h |
| 35 | 7 | **Simulation** |  | 29d | 2024-10-21 | 2024-11-28 |  | 0d |  |  |
| 36 | 7.1 | Simulation 1 | manual | 4d | 2024-10-21 | 2024-10-24 |  |  |  |  |
| 37 | 7.2 | Simulation 2 | manual | 4d | 2024-11-25 | 2024-11-28 |  |  |  |  |
| 38 | 8 | Integration | manual | 5d | 2024-12-09 | 2024-12-13 |  |  |  |  |
| 39 | 9 | (Buffer) | manual | 10d | 2025-01-06 | 2025-01-17 |  |  |  |  |
| 40 | 10 | Demo rehearsal | manual | 9d | 2025-01-20 | 2025-01-30 | 39 |  |  |  |
