# Project Schedule

Schedule from MS Project, 2024-09-23 to 2025-01-31, status date 2024-11-20, A marks actual dates.

## Calendars

- Standard: Mon-Fri 08:00-12:00, 13:00-17:00; Sat-Sun off.

## Resources

| Resource |
| --- |
| Maxi |
| Daniel |
| Eren |

## Schedule

| ID | WBS | Task | Type | Duration | Start | Finish | Predecessors | Complete | Remaining | Total slack | Free slack | Constraint | Resources | Work | Actual work |
| --- | --- | --- | --- | --- | --- | --- | --- | --- | --- | --- | --- | --- | --- | --- | --- |
| 1 | 1 | **Project Management** |  | 95d | 2024-09-23 A | 2025-01-31 |  | 99% | 0d |  |  |  |  |  |  |
| 2 | 1.1 | Project kick-off | milestone, manual | 0d | 2024-09-23 A | 2024-09-23 A |  | 100% |  |  |  |  |  |  |  |
| 3 | 1.2 | Initial Project Plan | milestone, manual | 0d | 2024-09-27 A | 2024-09-27 A |  | 100% |  |  |  |  |  |  |  |
| 4 | 1.3 | Project Plan Review 1 | milestone, manual | 0d | 2024-10-25 A | 2024-10-25 A |  | 100% |  |  |  |  |  |  |  |
| 5 | 1.4 | Project Plan Review 2 | milestone, manual | 0d | 2024-11-29 | 2024-11-29 |  |  |  |  |  |  |  |  |  |
| 6 | 1.5 | Final Review | milestone, manual | 0d | 2025-01-24 | 2025-01-24 |  |  |  |  |  |  |  |  |  |
| 7 | 1.6 | Demo & Presentation | milestone, manual | 0d | 2025-01-31 | 2025-01-31 |  |  |  |  |  |  |  |  |  |
| 9 | 1.7 | Project Status | manual | 1d | 2024-09-23 A | 2024-09-23 A |  | 100% |  |  |  |  |  |  |  |
| 10 | 2 | Collecting Requirement | manual | 4d | 2024-09-25 A | 2024-09-30 A |  | 100% |  |  |  |  | Daniel [20%]; Eren [20%]; Maxi [20%] | 19.2h | 19.2h |
| 11 | 3 | Generate Concept | manual | 4d | 2024-10-01 A | 2024-10-04 A |  | 100% |  |  |  |  | Daniel [20%]; Eren [20%]; Maxi [20%] | 19.2h | 19.2h |
| 13 | 4 | **Mechanical Design** |  | 75d | 2024-10-07 A | 2025-01-17 |  | 51% | 37d | 0d |  |  |  | 104h | 60.8h |
| 14 | 4.1 | **Gripper** |  | 44d | 2024-10-07 A | 2024-12-05 |  | 63% | 16.13d | 29d |  |  |  | 48h | 30.4h |
| 15 | 4.1.1 | Design | manual | 10d | 2024-10-07 A | 2024-10-18 A |  | 100% |  |  |  |  | Maxi [20%] | 16h | 16h |
| 16 | 4.1.2 | Build | manual | 15d | 2024-11-08 A | 2024-11-28 | 15 | 60% | 6d |  |  |  | Maxi [20%] | 24h | 14.4h |
| 17 | 4.1.3 | Function Test |  | 5d | 2024-11-29 | 2024-12-05 | 16 |  |  | 29d |  |  | Maxi [20%] | 8h |  |
| 18 | 4.2 | **Bolt Tray** |  | 49d | 2024-10-07 A | 2024-12-12 |  | 54% | 22.4d | 24d |  |  |  | 56h | 30.4h |
| 19 | 4.2.1 | Design | manual | 10d | 2024-10-07 A | 2024-10-18 A |  | 100% |  |  |  |  | Eren [20%] | 16h | 16h |
| 20 | 4.2.2 | Design v1 |  | 5d | 2024-11-08 A | 2024-11-14 A |  | 100% |  |  |  | start no earlier than 2024-11-08 | Eren [20%] | 8h | 8h |
| 21 | 4.2.3 | Build |  | 19d | 2024-11-15 A | 2024-12-11 | 20 | 21% | 15d | 24d | 0d |  | Eren [20%] | 30.4h | 6.4h |
| 22 | 4.2.4 | Function Test |  | 1d | 2024-12-12 | 2024-12-12 | 21 |  |  | 24d |  |  | Eren [20%] | 1.6h |  |
| 23 | 4.3 | **Protection for harsh conditions** |  | 10d | 2025-01-06 | 2025-01-17 |  |  |  | 0d |  |  |  |  |  |
| 24 | 4.3.1 | Design | manual | 10d | 2025-01-06 | 2025-01-17 |  |  |  |  |  |  |  |  |  |
| 25 | 5 | **Electrical Design** |  | 8d | 2025-01-06 | 2025-01-15 |  |  |  | 0d |  |  |  | 12.8h |  |
| 26 | 5.1 | Design | manual | 5d | 2025-01-06 | 2025-01-10 | 31 |  |  |  |  |  | Eren [20%] | 8h |  |
| 27 | 5.2 | Wiring | manual | 2d | 2025-01-13 | 2025-01-14 | 26 |  |  |  |  |  | Eren [20%] | 3.2h |  |
| 28 | 5.3 | Test | manual | 1d | 2025-01-15 | 2025-01-15 | 27 |  |  |  |  |  | Eren [20%] | 1.6h |  |

| ID | WBS | Task | Type | Duration | Start | Finish | Predecessors | Complete | Remaining | Total slack | Deadline | Resources | Work | Actual work |
| --- | --- | --- | --- | --- | --- | --- | --- | --- | --- | --- | --- | --- | --- | --- |
| 29 | 6 | **Software Design** |  | 49d | 2024-10-07 A | 2024-12-12 |  | 33% | 32.67d | 24d |  |  | 24h | 8h |
| 30 | 6.1 | **Robot Manipulator** |  | 49d | 2024-10-07 A | 2024-12-12 |  | 33% | 32.67d | 24d |  |  | 24h | 8h |
| 31 | 6.1.1 | Select Robot Arm | manual | 5d | 2024-10-07 A | 2024-10-11 A |  | 100% |  |  |  | Daniel [20%] | 8h | 8h |
| 32 | 6.1.2 | Code | manual | 5d | 2024-11-29 | 2024-12-05 | 31 |  |  |  |  | Daniel [20%] | 8h |  |
| 33 | 6.1.3 | Function Test |  | 5d | 2024-12-06 | 2024-12-12 | 32 |  |  | 24d |  | Daniel [20%] | 8h |  |
| 34 | 7 | **Simulation** |  | 34d | 2024-10-14 A | 2024-11-28 |  | 73% | 9.27d | 0d |  |  | 41.6h | 32h |
| 35 | 7.1 | Simulation 1 | manual | 9d | 2024-10-14 A | 2024-10-24 A |  | 100% |  |  | 2024-10-24 | Daniel [20%]; Maxi [20%] | 20.8h | 20.8h |
| 36 | 7.2 | Simulation 2 | manual | 13d | 2024-11-12 A | 2024-11-28 |  | 54% | 6d |  | 2024-11-28 | Daniel [20%] | 20.8h | 11.2h |
| 37 | 8 | Integration | manual | 5d | 2025-01-16 | 2025-01-22 | 17, 22, 28, 33 |  |  |  |  | Daniel [20%]; Eren [20%]; Maxi [20%] | 24h |  |
| 38 | 9 | Demo rehearsal | manual | 6d | 2025-01-23 | 2025-01-30 | 37 |  |  |  | 2025-01-30 |  |  |  |
