# Project Schedule

Schedule from MS Project, 2024-09-23 to 2025-01-31, status date 2025-01-13, A marks actual dates.

## Calendars

- Standard: Mon-Fri 08:00-12:00, 13:00-17:00; Sat-Sun off.

## Resources

| Resource |
| --- |
| Maxi |
| Daniel |
| Eren |

## Schedule

| ID | WBS | Task | Type | Duration | Start | Finish | Predecessors | Complete | Remaining | Total slack | Constraint | Resources | Work | Actual work |
| --- | --- | --- | --- | --- | --- | --- | --- | --- | --- | --- | --- | --- | --- | --- |
| 1 | 1 | **Project Management** |  | 95d | 2024-09-23 A | 2025-01-31 |  | 99% | 0d |  |  |  |  |  |
| 2 | 1.1 | Project kick-off | milestone, manual | 0d | 2024-09-23 A | 2024-09-23 A |  | 100% |  |  |  |  |  |  |
| 3 | 1.2 | Initial Project Plan | milestone, manual | 0d | 2024-09-27 A | 2024-09-27 A |  | 100% |  |  |  |  |  |  |
| 4 | 1.3 | Project Plan Review 1 | milestone, manual | 0d | 2024-10-25 A | 2024-10-25 A |  | 100% |  |  |  |  |  |  |
| 5 | 1.4 | Project Plan Review 2 | milestone, manual | 0d | 2024-11-29 A | 2024-11-29 A |  | 100% |  |  |  |  |  |  |
| 6 | 1.5 | Final Review | milestone, manual | 0d | 2025-01-24 | 2025-01-24 |  |  |  |  |  |  |  |  |
| 7 | 1.6 | Demo & Presentation | milestone, manual | 0d | 2025-01-31 | 2025-01-31 |  |  |  |  |  |  |  |  |
| 9 | 1.7 | Project Status | manual | 1d | 2024-09-23 A | 2024-09-23 A |  | 100% |  |  |  |  |  |  |
| 10 | 2 | Collecting Requirement | manual | 4d | 2024-09-25 A | 2024-09-30 A |  | 100% |  |  |  | Daniel [20%]; Eren [20%]; Maxi [20%] | 19.2h | 19.2h |
| 11 | 3 | Generate Concept | manual | 4d | 2024-10-01 A | 2024-10-04 A |  | 100% |  |  |  | Daniel [20%]; Eren [20%]; Maxi [20%] | 19.2h | 19.2h |
| 13 | 4 | **Mechanical Design** |  | 70d | 2024-10-07 A | 2025-01-10 A |  | 100% |  |  |  |  | 98.4h | 98.4h |
| 14 | 4.1 | **Gripper** |  | 35d | 2024-10-07 A | 2024-11-22 A |  | 100% |  |  |  |  | 33.6h | 33.6h |
| 15 | 4.1.1 | Design | manual | 10d | 2024-10-07 A | 2024-10-18 A |  | 100% |  |  |  | Maxi [20%] | 16h | 16h |
| 16 | 4.1.2 | Build | manual | 10d | 2024-11-08 A | 2024-11-21 A | 15 | 100% |  |  |  | Maxi [20%] | 16h | 16h |
| 17 | 4.1.3 | Function Test |  | 1d | 2024-11-22 A | 2024-11-22 A | 16 | 100% |  |  |  | Maxi [20%] | 1.6h | 1.6h |
| 18 | 4.2 | **Bolt Tray, Plate Stack Holder** |  | 70d | 2024-10-07 A | 2025-01-10 A |  | 100% |  |  |  |  | 36h | 36h |
| 19 | 4.2.1 | Design | manual | 10d | 2024-10-07 A | 2024-10-18 A |  | 100% |  |  |  | Eren [20%] | 16h | 16h |
| 20 | 4.2.2 | Design v1 |  | 5d | 2024-11-08 A | 2024-11-14 A |  | 100% |  |  | start no earlier than 2024-11-08 | Eren [20%] | 8h | 8h |
| 21 | 4.2.3 | Build |  | 6d | 2024-11-15 A | 2024-11-22 A | 20 | 100% |  |  | finish no earlier than 2024-12-11 | Eren [20%] | 9.6h | 9.6h |
| 22 | 4.2.4 | Unit Test |  | 1d | 2024-11-25 A | 2024-11-25 A | 21 | 100% |  |  |  | Eren [20%] | 1.6h | 1.6h |
| 23 | 4.2.5 | Batch Build | manual | 2d | 2025-01-09 A | 2025-01-10 A |  | 100% |  |  |  | Eren [5%] | 0.8h | 0.8h |
| 24 | 4.3 | **Protection for harsh conditions** |  | 6d | 2024-12-12 A | 2024-12-19 A |  | 100% |  |  |  |  | 28.8h | 28.8h |
| 25 | 4.3.1 | Design | manual | 6d | 2024-12-12 A | 2024-12-19 A |  | 100% |  |  |  | Daniel [20%]; Maxi [20%]; Eren [20%] | 28.8h | 28.8h |
| 26 | 5 | **Electrical Design** |  | 5d | 2025-01-06 | 2025-01-10 |  |  |  | 0d |  |  |  |  |
| 27 | 5.1 | Design | manual | 5d | 2025-01-06 | 2025-01-10 |  |  |  |  |  |  |  |  |

| ID | WBS | Task | Type | Duration | Start | Finish | Predecessors | Complete | Remaining | Total slack | Constraint | Deadline | Resources | Work | Actual work |
| --- | --- | --- | --- | --- | --- | --- | --- | --- | --- | --- | --- | --- | --- | --- | --- |
| 28 | 6 | **Software Design** |  | 73d | 2024-10-07 A | 2025-01-15 |  | 88% | 8.59d | 0d |  |  |  | 27.2h | 24h |
| 29 | 6.1 | **Robot Manipulator** |  | 73d | 2024-10-07 A | 2025-01-15 |  | 88% | 8.59d | 0d |  |  |  | 27.2h | 24h |
| 30 | 6.1.1 | Select Robot Arm | manual | 5d | 2024-10-07 A | 2024-10-11 A |  | 100% |  |  |  |  | Daniel [20%] | 8h | 8h |
| 31 | 6.1.2 | Code | manual | 3d | 2024-11-19 A | 2024-11-21 A | 30 | 100% |  |  |  |  | Daniel [20%] | 4.8h | 4.8h |
| 32 | 6.1.3 | Function Test |  | 1d | 2024-11-22 A | 2024-11-22 A | 31 | 100% |  |  | finish no earlier than 2024-11-22 |  | Daniel [20%] | 1.6h | 1.6h |
| 33 | 6.1.4 | Code for Integration | manual | 8d | 2025-01-06 A | 2025-01-15 |  | 75% | 2d |  |  |  | Daniel [20%] | 12.8h | 9.6h |
| 34 | 7 | **Simulation** |  | 26d | 2024-10-14 A | 2024-11-18 A |  | 100% |  |  |  |  |  | 30.4h | 30.4h |
| 35 | 7.1 | Simulation 1 | manual | 9d | 2024-10-14 A | 2024-10-24 A |  | 100% |  |  |  | 2024-10-24 | Daniel [20%]; Maxi [20%] | 20.8h | 20.8h |
| 36 | 7.2 | Simulation 2 | manual | 5d | 2024-11-12 A | 2024-11-18 A |  | 100% |  |  |  | 2024-11-28 | Daniel [20%] | 9.6h | 9.6h |
| 37 | 8 | Integration | manual | 5d | 2025-01-16 | 2025-01-22 | 17, 22, 33 |  |  |  |  |  | Daniel [20%]; Eren [20%]; Maxi [20%] | 24h |  |
| 38 | 9 | Demo rehearsal | manual | 2d | 2025-01-23 | 2025-01-24 | 37 |  |  |  |  | 2025-01-30 |  |  |  |
