# Project Schedule

Schedule from MS Project, 2024-09-23 to 2025-01-31, status date 2025-01-31, A marks actual dates.

## Calendars

- Standard: Mon-Fri 08:00-12:00, 13:00-17:00; Sat-Sun off.

## Resources

| Resource |
| --- |
| Maxi |
| Daniel |
| Eren |

## Schedule

| ID | WBS | Task | Type | Duration | Start | Finish | Predecessors | Complete | Baseline start | Baseline finish | Baseline duration | Constraint | Resources | Work | Actual work |
| --- | --- | --- | --- | --- | --- | --- | --- | --- | --- | --- | --- | --- | --- | --- | --- |
| 1 | 1 | **Project Management** |  | 95d | 2024-09-23 A | 2025-01-31 A |  | 100% | 2024-09-23 | 2024-01-31 | 0d |  |  |  |  |
| 2 | 1.1 | Project kick-off | milestone, manual | 0d | 2024-09-23 A | 2024-09-23 A |  | 100% | 2024-09-23 | 2024-09-23 | 0d |  |  |  |  |
| 3 | 1.2 | Initial Project Plan | milestone, manual | 0d | 2024-09-27 A | 2024-09-27 A |  | 100% | 2024-09-27 | 2024-09-27 | 0d |  |  |  |  |
| 4 | 1.3 | Project Plan Review 1 | milestone, manual | 0d | 2024-10-25 A | 2024-10-25 A |  | 100% | 2024-10-25 | 2024-10-25 | 0d |  |  |  |  |
| 5 | 1.4 | Project Plan Review 2 | milestone, manual | 0d | 2024-11-29 A | 2024-11-29 A |  | 100% | 2024-11-29 | 2024-11-29 | 0d |  |  |  |  |
| 6 | 1.5 | Final Review | milestone, manual | 0d | 2025-01-24 A | 2025-01-24 A |  | 100% | 2025-01-24 | 2025-01-24 | 0d |  |  |  |  |
| 7 | 1.6 | Demo & Presentation | milestone, manual | 0d | 2025-01-31 A | 2025-01-31 A |  | 100% | 2025-01-31 | 2025-01-31 | 0d |  |  |  |  |
| 9 | 1.7 | Project Status | manual | 1d | 2024-09-23 | 2024-09-23 |  |  |  |  |  |  |  |  |  |
| 10 | 2 | Collecting Requirement | manual | 4d | 2024-09-25 A | 2024-09-30 A |  | 100% | 2024-09-25 | 2024-09-30 | 0d |  | Daniel [20%]; Eren [20%]; Maxi [20%] | 19.2h | 19.2h |
| 11 | 3 | Generate Concept | manual | 4d | 2024-10-01 A | 2024-10-04 A |  | 100% | 2024-10-01 | 2024-10-04 | 0d |  | Daniel [20%]; Eren [20%]; Maxi [20%] | 19.2h | 19.2h |
| 13 | 4 | **Mechanical Design** |  | 70d | 2024-10-07 A | 2025-01-10 A |  | 100% | 2024-10-07 | 2025-01-17 | 0d |  |  | 88.8h | 88.8h |
| 14 | 4.1 | **Gripper** |  | 35d | 2024-10-07 A | 2024-11-22 A |  | 100% | 2024-10-07 | 2024-11-29 | 0d |  |  | 33.6h | 33.6h |
| 15 | 4.1.1 | Design | manual | 10d | 2024-10-07 A | 2024-10-18 A |  | 100% | 2024-10-07 | 2024-10-18 | 0d |  | Maxi [20%] | 16h | 16h |
| 16 | 4.1.2 | Build | manual | 10d | 2024-11-08 A | 2024-11-21 A | 15 | 100% | 2024-11-04 | 2024-11-22 | 0d |  | Maxi [20%] | 16h | 16h |
| 17 | 4.1.3 | Function Test |  | 1d | 2024-11-22 A | 2024-11-22 A | 16 | 100% | 2024-11-25 | 2024-11-29 | 0d |  | Maxi [20%] | 1.6h | 1.6h |
| 18 | 4.2 | **Bolt Tray, Plate Stack Holder** |  | 70d | 2024-10-07 A | 2025-01-10 A |  | 100% | 2024-10-07 | 2024-11-04 | 0d |  |  | 36h | 36h |
| 19 | 4.2.1 | Design | manual | 10d | 2024-10-07 A | 2024-10-18 A |  | 100% | 2024-10-07 | 2024-10-18 | 0d |  | Eren [20%] | 16h | 16h |
| 20 | 4.2.2 | Design v1 |  | 5d | 2024-11-08 A | 2024-11-14 A |  | 100% | 2024-10-21 | 2024-10-25 | 0d | start no earlier than 2024-11-08 | Eren [20%] | 8h | 8h |
| 21 | 4.2.3 | Build |  | 6d | 2024-11-15 A | 2024-11-22 A | 20 | 100% | 2024-10-28 | 2024-11-01 | 0d | finish no earlier than 2024-12-11 | Eren [20%] | 9.6h | 9.6h |
| 22 | 4.2.4 | Unit Test |  | 1d | 2024-11-25 A | 2024-11-25 A | 21 | 100% | 2024-11-04 | 2024-11-04 | 0d |  | Eren [20%] | 1.6h | 1.6h |
| 23 | 4.2.5 | Batch Build | manual | 2d | 2025-01-09 A | 2025-01-10 A |  | 100% |  |  |  |  | Eren [5%] | 0.8h | 0.8h |
| 24 | 4.3 | **Protection for harsh conditions** |  | 6d | 2024-12-12 A | 2024-12-19 A |  | 100% | 2025-01-06 | 2025-01-17 | 0d |  |  | 19.2h | 19.2h |
| 25 | 4.3.1 | Design | manual | 6d | 2024-12-12 A | 2024-12-19 A |  | 100% | 2025-01-06 | 2025-01-17 | 0d |  | Maxi [10%]; Eren [20%] | 19.2h | 19.2h |
| 26 | 5 | **Electrical Design** | inactive | 1d? | 2024-09-23 | 2024-09-23 |  |  | 2024-11-18 | 2024-12-06 |  |  |  |  |  |
| 27 | 5.1 | Design | inactive, manual | 1d? | 2024-09-23 | 2024-09-23 |  |  | 2024-11-18 | 2024-11-29 | 0d |  |  |  |  |
| 28 | 5.2 | Wiring | inactive, manual | 1d? | 2024-09-23 | 2024-09-23 |  |  | 2024-12-02 | 2024-12-05 | 0d |  |  |  |  |
| 29 | 5.3 | Test | inactive, manual | 1d? | 2024-09-23 | 2024-09-23 |  |  | 2024-12-06 | 2024-12-06 | 0d |  |  |  |  |

| ID | WBS | Task | Type | Duration | Start | Finish | Predecessors | Complete | Baseline start | Baseline finish | Baseline duration | Constraint | Deadline | Resources | Work | Actual work |
| --- | --- | --- | --- | --- | --- | --- | --- | --- | --- | --- | --- | --- | --- | --- | --- | --- |
| 30 | 6 | **Software Design** |  | 73d | 2024-10-07 A | 2025-01-15 A |  | 100% | 2024-10-07 | 2024-11-29 | 0d |  |  |  | 27.2h | 27.2h |
| 31 | 6.1 | **Robot Manipulator** |  | 73d | 2024-10-07 A | 2025-01-15 A |  | 100% | 2024-10-07 | 2024-11-29 | 0d |  |  |  | 27.2h | 27.2h |
| 32 | 6.1.1 | Select Robot Arm | manual | 5d | 2024-10-07 A | 2024-10-11 A |  | 100% | 2024-10-07 | 2024-10-18 | 0d |  |  | Daniel [20%] | 8h | 8h |
| 33 | 6.1.2 | Code | manual | 3d | 2024-11-19 A | 2024-11-21 A | 32 | 100% | 2024-10-28 | 2024-11-22 | 0d |  |  | Daniel [20%] | 4.8h | 4.8h |
| 34 | 6.1.3 | Function Test |  | 1d | 2024-11-22 A | 2024-11-22 A | 33 | 100% | 2024-11-25 | 2024-11-29 | 0d | finish no earlier than 2024-11-22 |  | Daniel [20%] | 1.6h | 1.6h |
| 35 | 6.1.4 | Code for Integration | manual | 8d | 2025-01-06 A | 2025-01-15 A |  | 100% |  |  |  |  |  | Daniel [20%] | 12.8h | 12.8h |
| 36 | 7 | **Simulation** |  | 26d | 2024-10-14 A | 2024-11-18 A |  | 100% | 2024-10-21 | 2024-11-28 | 0d |  |  |  | 30.4h | 30.4h |
| 37 | 7.1 | Simulation 1 | manual | 9d | 2024-10-14 A | 2024-10-24 A |  | 100% | 2024-10-21 | 2024-10-24 | 0d |  | 2024-10-24 | Daniel [20%]; Maxi [10%] | 20.8h | 20.8h |
| 38 | 7.2 | Simulation 2 | manual | 5d | 2024-11-12 A | 2024-11-18 A |  | 100% | 2024-11-25 | 2024-11-28 | 0d |  | 2024-11-28 | Daniel [20%] | 9.6h | 9.6h |
| 39 | 8 | Integration | manual | 1d | 2025-01-16 A | 2025-01-16 A | 17, 22, 35 | 100% | 2024-12-09 | 2024-12-13 | 0d |  |  | Daniel [20%]; Eren [20%]; Maxi [20%] | 4.8h | 4.8h |
| 40 | 9 | Demo rehearsal | manual | 1d | 2025-01-16 A | 2025-01-17 A | 39 | 100% | 2025-01-20 | 2025-01-30 | 0d |  | 2025-01-30 |  |  |  |
